# CargoWizzard

Schedule from MS Project, 2013-11-11 to 2014-03-04, costs in Kč, A marks actual dates.

## Calendars

- Standard: Mon-Fri 08:00-12:00, 13:00-17:00; Sat-Sun off.

## Resources

| Resource | Rate |
| --- | --- |
| Project manager | 800 |
| Analytik | 600 |
| Vývojář | 500 |
| Tester | 300 |
| Dokumentarista | 250 |
| Administrátor | 400 |

## Schedule

| ID | WBS | Task | Duration | Start | Finish | Predecessors | Complete | Total slack | Free slack | Resources | Work | Actual work | Cost | Actual cost |
| --- | --- | --- | --- | --- | --- | --- | --- | --- | --- | --- | --- | --- | --- | --- |
| 1 | 1 | **Základní úkony** | 0.25d | 2013-11-11 A | 2013-11-11 A |  | 100% |  |  |  | 2h | 2h | 1,600 | 1,600 |
| 2 | 1.1 | Výběr týmu | 0.12d | 2013-11-11 A | 2013-11-11 A |  | 100% |  |  | Project manager | 1h | 1h | 800 | 800 |
| 3 | 1.2 | Deklarace záměru | 0.12d | 2013-11-11 A | 2013-11-11 A |  | 100% |  |  | Project manager | 1h | 1h | 800 | 800 |
| 4 | 2 | **Úvodní studie** | 1d | 2013-11-12 A | 2013-11-12 A | 1 | 100% |  |  |  | 6h | 6h | 3,600 | 3,600 |
| 5 | 2.1 | Vize projektu | 1d | 2013-11-12 A | 2013-11-12 A |  | 100% |  |  | Analytik | 1h | 1h | 600 | 600 |
| 6 | 2.2 | Katalog požadavků | 0.25d | 2013-11-12 A | 2013-11-12 A |  | 100% |  |  | Analytik | 2h | 2h | 1,200 | 1,200 |
| 7 | 2.3 | Glosář | 0.06d | 2013-11-12 A | 2013-11-12 A |  | 100% |  |  | Analytik | 0.5h | 0.5h | 300 | 300 |
| 8 | 2.4 | Analýza rizik | 0.06d | 2013-11-12 A | 2013-11-12 A |  | 100% |  |  | Analytik | 0.5h | 0.5h | 300 | 300 |
| 9 | 2.5 | Rozpočet projektu | 0.25d | 2013-11-12 A | 2013-11-12 A |  | 100% |  |  | Analytik | 2h | 2h | 1,200 | 1,200 |
| 10 | 3 | **Analýza** | 3.75d | 2013-11-13 | 2013-11-18 | 4 |  | 0d |  |  | 98h |  | 58,800 |  |
| 11 | 3.1 | Model jednání | 2.5d | 2013-11-13 | 2013-11-15 |  |  | 1.25d |  | Analytik | 20h |  | 12,000 |  |
| 12 | 3.2 | Popis architekturty | 1d | 2013-11-13 | 2013-11-13 |  |  | 2.75d |  | Analytik [50%] | 4h |  | 2,400 |  |
| 13 | 3.3 | Popis nasazení | 1d | 2013-11-13 | 2013-11-13 |  |  | 2.75d |  | Analytik [25%] | 2h |  | 1,200 |  |
| 14 | 3.4 | Popis komponent | 1d | 2013-11-13 | 2013-11-13 |  |  | 2.75d |  | Analytik [25%] | 2h |  | 1,200 |  |
| 15 | 3.5 | Popis scenářů | 1d | 2013-11-13 | 2013-11-13 |  |  | 2.75d |  | Analytik [50%] | 4h |  | 2,400 |  |
| 16 | 3.6 | Popis aktivit | 1d | 2013-11-13 | 2013-11-13 |  |  | 2.75d |  | Analytik | 8h |  | 4,800 |  |
| 17 | 3.7 | Popis interakce | 2.5d | 2013-11-13 | 2013-11-15 |  |  | 1.25d |  | Analytik | 20h |  | 12,000 |  |
| 18 | 3.8 | Datový model | 1d | 2013-11-13 | 2013-11-13 |  |  | 2.75d |  | Analytik | 8h |  | 4,800 |  |
| 19 | 3.9 | Diagramy tříd | 3.75d | 2013-11-13 | 2013-11-18 |  |  | 0d |  | Analytik | 30h |  | 18,000 |  |
| 20 | 4 | **Implementace** | 69.2d | 2013-11-18 | 2014-02-21 | 10 |  | 0d |  |  | 1068.57h |  | 533,428.6 |  |
| 21 | 4.1 | Studium specifikace | 2.5d | 2013-11-18 | 2013-11-21 |  |  | 4.2d |  | Vývojář | 20h |  | 10,000 |  |
| 22 | 4.2 | Výběr a studium technologií | 3.12d | 2013-11-18 | 2013-11-21 |  |  | 0d |  | Vývojář | 25h |  | 12,500 |  |
| 23 | 4.3 | Nastavení vývojového prostředí | 3.57d | 2013-11-21 | 2013-11-27 | 22 |  | 0d |  | Vývojář [70%]; Administrátor [30%] | 28.57h |  | 13,428.6 |  |
| 24 | 4.4 | Vývoj OnBoard Device | 20d | 2013-11-27 | 2013-12-25 | 21, 22, 23 |  | 17.5d | 0d | Vývojář [93.8%] | 150h |  | 75,000 |  |
| 25 | 4.5 | Vývoj Webového rozhraní | 30d | 2013-11-27 | 2014-01-08 | 21, 22, 23 |  | 7.5d | 0d | Vývojář [83.3%] | 200h |  | 100,000 |  |
| 26 | 4.6 | Vývoj jádra systému | 37.5d | 2013-11-27 | 2014-01-17 | 21, 22, 23 |  | 0d |  | Vývojář | 300h |  | 150,000 |  |
| 27 | 4.7 | Vývoj dabáze | 10d | 2013-11-27 | 2013-12-11 | 21, 22, 23 |  | 25d | 0d | Vývojář [93.8%] | 75h |  | 37,500 |  |
| 28 | 4.8 | Prvotní ladění | 25d | 2014-01-17 | 2014-02-21 | 24, 25, 26, 27 |  | 0d |  | Vývojář | 200h |  | 100,000 |  |
| 29 | 4.9 | Opravy chyb | 8.75d | 2013-11-27 | 2013-12-10 | 32SS, 33SS |  | 53.75d |  | Vývojář | 70h |  | 35,000 |  |

| ID | WBS | Task | Duration | Start | Finish | Predecessors | Total slack | Free slack | Resources | Work | Cost |
| --- | --- | --- | --- | --- | --- | --- | --- | --- | --- | --- | --- |
| 30 | 5 | **Testování** | 25d | 2013-11-27 | 2014-01-01 | 24SS, 25SS, 26SS, 27SS | 25d | 0d |  | 270h | 81,000 |
| 31 | 5.1 | Studium specifikace | 2.5d | 2013-11-27 | 2013-11-29 |  | 47.5d |  | Tester | 20h | 6,000 |
| 32 | 5.2 | Testování modulů | 25d | 2013-11-27 | 2014-01-01 |  | 25d | 0d | Tester | 200h | 60,000 |
| 33 | 5.3 | Testování integrace | 6.25d | 2013-11-27 | 2013-12-05 |  | 43.75d | 0d | Tester | 50h | 15,000 |
| 34 | 6 | **Dokumentování** | 75.45d | 2013-11-18 | 2014-03-04 |  | 0d |  |  | 100h | 37,500 |
| 35 | 6.1 | Programátorská dokumentace | 6.25d | 2013-11-18 | 2013-11-26 | 20SS | 69.2d |  | Vývojář | 50h | 25,000 |
| 36 | 6.2 | Uživatelská dokumentace | 6.25d | 2014-02-21 | 2014-03-04 | 20 | 0d |  | Dokumentarista | 50h | 12,500 |
| 37 | 7 | **Nasazení** | 18.75d? | 2014-01-01 | 2014-01-28 | 30 | 25d |  |  | 265h | 121,000 |
| 38 | 7.1 | Nastavení produkčního prostředí | 1.88d? | 2014-01-01 | 2014-01-03 |  | 41.88d |  | Administrátor | 15h | 6,000 |
| 39 | 7.2 | Akceptační testování | 18.75d? | 2014-01-01 | 2014-01-28 |  | 25d |  | Tester [40%]; Analytik [40%]; Project manager [20%] | 150h | 78,000 |
| 40 | 7.3 | Pilotní provoz | 12.5d? | 2014-01-01 | 2014-01-17 |  | 31.25d |  | Administrátor [50%]; Tester [40%]; Vývojář [10%] | 100h | 37,000 |
